# Carta Gantt Microsoft Project rev 3 corregida

Schedule from MS Project, 2026-07-27 to 2026-11-11, status date 2026-07-26, costs in $.

## Calendars

- L-V 8h: Mon-Fri 08:00-12:00, 13:00-17:00; Sat-Sun off. Exceptions (off unless hours are given): 2026-09-18 to 2026-09-19 (Fiestas Patrias), 2026-10-12 (Descubrimiento de America), 2026-10-31 (Iglesias Evangelica), 2026-11-01 (todos los santos).

## Resources

| Resource | Rate |
| --- | --- |
| Analista | 10000 |
| Backend | 10000 |
| Frontend | 10000 |
| Integraciones | 10000 |
| Documentación | 10000 |
| QA / Tester | 10000 |

## Schedule

| ID | WBS | Task | Duration | Start | Finish | Predecessors | Baseline start | Baseline finish | Baseline duration | Total slack | Resources | Work | Cost | Baseline cost | Text1 |
| --- | --- | --- | --- | --- | --- | --- | --- | --- | --- | --- | --- | --- | --- | --- | --- |
| 1 | 1 | **Desarrollo Administracion** | 75.25d | 2026-07-27 09:00 | 2026-11-11 11:00 |  | 2026-07-27 09:00 | 2026-11-11 11:00 | 75.25d | 0d |  | 618h | 6,180,000 | 6,180,000 |  |
| 2 | 1.1 | **Transversal** | 9.88d | 2026-07-27 09:00 | 2026-08-07 17:00 |  | 2026-07-27 09:00 | 2026-08-07 17:00 | 9.88d | 0d |  | 78h | 780,000 | 780,000 |  |
| 3 | 1.1.1.1 | A001 - Levantamiento y alcance funcional | 20h | 2026-07-27 09:00 | 2026-07-29 13:00 |  | 2026-07-27 09:00 | 2026-07-29 13:00 | 20h | 0d | Analista | 20h | 200,000 | 200,000 | A001 - Levantamiento y alcance funcional - Analista |
| 4 | 1.1.2.1 | A002 - Modelo de datos y migraciones | 12h | 2026-07-30 11:00 | 2026-07-31 17:00 | 5 | 2026-07-30 11:00 | 2026-07-31 17:00 | 12h | 0d | Backend | 12h | 120,000 | 120,000 | A002 - Modelo de datos y migraciones - Backend |
| 5 | 1.1.1.2 | A003 - Estados y reglas de negocio | 6h | 2026-07-29 15:00 | 2026-07-30 11:00 | 3 | 2026-07-29 15:00 | 2026-07-30 11:00 | 6h | 0d | Analista | 6h | 60,000 | 60,000 | A003 - Estados y reglas de negocio - Analista |
| 6 | 1.1.2.2 | A004 - Permisos y roles | 10h | 2026-07-31 17:00 | 2026-08-03 19:00 | 4, 5 | 2026-07-31 17:00 | 2026-08-03 19:00 | 10h | 0d | Backend | 10h | 100,000 | 100,000 | A004 - Permisos y roles - Backend |
| 7 | 1.1.2.3 | A005 - Auditoría e historial | 10h | 2026-08-04 09:00 | 2026-08-05 11:00 | 6 | 2026-08-04 09:00 | 2026-08-05 11:00 | 10h | 0d | Backend | 10h | 100,000 | 100,000 | A005 - Auditoría e historial - Backend |
| 8 | 1.1.2.4 | A006 - Gestión de archivos adjuntos | 8h | 2026-08-05 11:00 | 2026-08-06 11:00 | 7 | 2026-08-05 11:00 | 2026-08-06 11:00 | 8h | 0d | Backend | 8h | 80,000 | 80,000 | A006 - Gestión de archivos adjuntos - Backend |
| 9 | 1.1.3.1 | A007 - Diseño UX y navegación | 12h | 2026-08-06 11:00 | 2026-08-07 17:00 | 8 | 2026-08-06 11:00 | 2026-08-07 17:00 | 12h | 0d | Frontend | 12h | 120,000 | 120,000 | A007 - Diseño UX y navegación - Frontend |
| 10 | 1.2 | **Rendiciones** | 18.25d | 2026-09-09 15:00 | 2026-10-06 17:00 |  | 2026-09-09 15:00 | 2026-10-06 17:00 | 18.25d | 0d |  | 142h | 1,420,000 | 1,420,000 |  |
| 11 | 2.1.1.1 | R001 - Lista y búsqueda de rendiciones | 4h | 2026-09-11 11:00 | 2026-09-11 17:00 | 12 | 2026-09-11 11:00 | 2026-09-11 17:00 | 4h | 0d | Frontend | 4h | 40,000 | 40,000 | R001 - Lista y búsqueda de rendiciones - Frontend |
| 12 | 2.1.2.1 | R002 - Crear y editar rendición | 6h | 2026-09-10 15:00 | 2026-09-11 11:00 | 14 | 2026-09-10 15:00 | 2026-09-11 11:00 | 6h | 0d | Backend | 6h | 60,000 | 60,000 | R002 - Crear y editar rendición - Backend |
| 13 | 2.1.2.2 | R003 - Responsables de rendición | 4h | 2026-09-09 15:00 | 2026-09-09 19:00 | 46 | 2026-09-09 15:00 | 2026-09-09 19:00 | 4h | 0d | Backend | 4h | 40,000 | 40,000 | R003 - Responsables de rendición - Backend |
| 14 | 2.1.2.3 | R004 - Categorías y subcategorías de gasto | 4h | 2026-09-10 09:00 | 2026-09-10 13:00 | 13 | 2026-09-10 09:00 | 2026-09-10 13:00 | 4h | 0d | Backend | 4h | 40,000 | 40,000 | R004 - Categorías y subcategorías de gasto - Backend |
| 15 | 2.1.2.4 | R005 - Entregas de fondo | 6h | 2026-09-11 17:00 | 2026-09-14 13:00 | 11 | 2026-09-11 17:00 | 2026-09-14 13:00 | 6h | 0d | Backend | 6h | 60,000 | 60,000 | R005 - Entregas de fondo - Backend |
| 16 | 2.1.2.5 | R006 - Detalle de gastos | 8h | 2026-09-14 15:00 | 2026-09-15 13:00 | 15 | 2026-09-14 15:00 | 2026-09-15 13:00 | 8h | 0d | Backend | 8h | 80,000 | 80,000 | R006 - Detalle de gastos - Backend |
| 17 | 2.1.1.2 | R007 - Adjuntos y previsualización | 8h | 2026-09-15 15:00 | 2026-09-16 13:00 | 16 | 2026-09-15 15:00 | 2026-09-16 13:00 | 8h | 0d | Frontend | 8h | 80,000 | 80,000 | R007 - Adjuntos y previsualización - Frontend |
| 18 | 2.1.2.6 | R008 - Validación documental | 10h | 2026-09-16 15:00 | 2026-09-17 17:00 | 17 | 2026-09-16 15:00 | 2026-09-17 17:00 | 10h | 0d | Backend | 10h | 100,000 | 100,000 | R008 - Validación documental - Backend |
| 19 | 2.1.2.7 | R009 - Cálculos de rendición | 4h | 2026-09-17 17:00 | 2026-09-18 11:00 | 18 | 2026-09-17 17:00 | 2026-09-18 11:00 | 4h | 0d | Backend | 4h | 40,000 | 40,000 | R009 - Cálculos de rendición - Backend |
| 20 | 2.1.2.8 | R010 - Presentación de rendición | 4h | 2026-09-18 11:00 | 2026-09-18 17:00 | 19 | 2026-09-18 11:00 | 2026-09-18 17:00 | 4h | 0d | Backend | 4h | 40,000 | 40,000 | R010 - Presentación de rendición - Backend |
| 21 | 2.1.1.3 | R011 - Revisión y observaciones | 6h | 2026-09-18 17:00 | 2026-09-21 13:00 | 20 | 2026-09-18 17:00 | 2026-09-21 13:00 | 6h | 0d | Frontend | 6h | 60,000 | 60,000 | R011 - Revisión y observaciones - Frontend |
| 22 | 2.1.2.9 | R012 - Aprobación y rechazo | 6h | 2026-09-21 15:00 | 2026-09-22 11:00 | 21 | 2026-09-21 15:00 | 2026-09-22 11:00 | 6h | 0d | Backend | 6h | 60,000 | 60,000 | R012 - Aprobación y rechazo - Backend |
| 23 | 2.1.1.4 | R013 - Historial de aprobaciones | 4h | 2026-09-22 11:00 | 2026-09-22 17:00 | 22 | 2026-09-22 11:00 | 2026-09-22 17:00 | 4h | 0d | Frontend | 4h | 40,000 | 40,000 | R013 - Historial de aprobaciones - Frontend |
| 24 | 2.1.2.10 | R014 - Liquidación de rendición | 8h | 2026-09-22 17:00 | 2026-09-23 17:00 | 23 | 2026-09-22 17:00 | 2026-09-23 17:00 | 8h | 0d | Backend | 8h | 80,000 | 80,000 | R014 - Liquidación de rendición - Backend |
| 25 | 2.1.2.11 | R015 - Devolución del responsable | 8h | 2026-09-23 17:00 | 2026-09-24 17:00 | 24 | 2026-09-23 17:00 | 2026-09-24 17:00 | 8h | 0d | Backend | 8h | 80,000 | 80,000 | R015 - Devolución del responsable - Backend |
| 26 | 2.1.2.12 | R016 - Reembolso al responsable | 6h | 2026-09-24 17:00 | 2026-09-25 13:00 | 25 | 2026-09-24 17:00 | 2026-09-25 13:00 | 6h | 0d | Backend | 6h | 60,000 | 60,000 | R016 - Reembolso al responsable - Backend |
| 27 | 2.1.3.1 | R017 - Conciliación de liquidaciones | 10h | 2026-09-29 09:00 | 2026-09-30 11:00 | 47, 24 | 2026-09-29 09:00 | 2026-09-30 11:00 | 10h | 0d | Integraciones | 10h | 100,000 | 100,000 | R017 - Conciliación de liquidaciones - Integraciones |
| 28 | 2.2.1.1 | R018 - Alertas de rendiciones | 4h | 2026-09-30 11:00 | 2026-09-30 17:00 | 27 | 2026-09-30 11:00 | 2026-09-30 17:00 | 4h | 0d | Backend | 4h | 40,000 | 40,000 | R018 - Alertas de rendiciones - Backend |
| 29 | 2.2.2.1 | R019 - Exportación PDF y Excel | 6h | 2026-09-30 17:00 | 2026-10-01 13:00 | 28 | 2026-09-30 17:00 | 2026-10-01 13:00 | 6h | 0d | Frontend | 6h | 60,000 | 60,000 | R019 - Exportación PDF y Excel - Frontend |
| 30 | 2.2.2.2 | R020 - Dashboard de rendiciones | 8h | 2026-10-01 15:00 | 2026-10-02 13:00 | 29 | 2026-10-01 15:00 | 2026-10-02 13:00 | 8h | 0d | Frontend | 8h | 80,000 | 80,000 | R020 - Dashboard de rendiciones - Frontend |
| 31 | 2.1.4.1 | R021 - Pruebas del módulo | 12h | 2026-10-02 15:00 | 2026-10-05 19:00 | 30 | 2026-10-02 15:00 | 2026-10-05 19:00 | 12h | 0d | QA / Tester | 12h | 120,000 | 120,000 | R021 - Pruebas del módulo - QA / Tester |
| 32 | 2.3.1.1 | R022 - Manual de rendiciones | 6h | 2026-10-06 09:00 | 2026-10-06 17:00 | 31 | 2026-10-06 09:00 | 2026-10-06 17:00 | 6h | 0d | Documentación | 6h | 60,000 | 60,000 | R022 - Manual de rendiciones - Documentación |

Notes:
- 3: Procesos, actores, excepciones y criterios de aceptación documentados.
- 4: Modelos, relaciones, restricciones e índices migran sin errores.
- 5: Matriz de estados, transiciones y excepciones validada.
- 6: Acceso por rol y acción verificado en casos permitidos y denegados.
- 7: Cambios críticos conservan usuario, fecha, valor anterior y motivo.
- 8: Validación, almacenamiento, acceso y descarga segura de respaldos.
- 9: Flujos y pantallas principales aprobados antes de la construcción final.
- 11: Filtros por responsable, estado, fecha y número; paginación.
- 12: Borrador editable con validaciones de cabecera.
- 13: Selección desde personal y conservación de datos históricos.
- 14: Catálogos administrables, activos y sin duplicados.
- 15: Múltiples entregas, medios de pago y saldo acumulado.
- 16: Registro de facturas, boletas, peajes y otros comprobantes.
- 17: Subida, vista previa, descarga y reemplazo controlado.
- 18: Control de duplicados, montos, fechas, proveedor y ausencia de respaldo.
- 19: Totales, aprobado, fondos, diferencia y saldos consistentes.
- 20: Bloqueo de edición y registro de la presentación.
- 21: Observaciones por gasto y devolución a corrección.
- 22: Aprobación por rol, rechazo motivado y trazabilidad.
- 23: Secuencia completa visible para el usuario autorizado.
- 24: Resultado: cuadrada, responsable devuelve o empresa reembolsa.
- 25: Registro y enlace con el ingreso bancario correspondiente.
- 26: Orden de pago, estado y enlace con egreso bancario.
- 27: Aplicación bancaria a devoluciones y reembolsos.
- 28: Pendientes, vencidas, observadas y fondos sin rendir.
- 29: Resumen y detalle reproducibles para respaldo.
- 30: Indicadores por responsable, estado y diferencia.
- 31: Pruebas unitarias, integración y casos de liquidación.
- 32: Guía operativa y resolución de casos frecuentes.

| ID | WBS | Task | Duration | Start | Finish | Predecessors | Baseline start | Baseline finish | Baseline duration | Total slack | Resources | Work | Cost | Baseline cost | Text1 |
| --- | --- | --- | --- | --- | --- | --- | --- | --- | --- | --- | --- | --- | --- | --- | --- |
| 33 | 1.3 | **Banco y Conciliacion** | 48.5d | 2026-08-07 17:00 | 2026-10-19 13:00 |  | 2026-08-07 17:00 | 2026-10-19 13:00 | 48.5d | 0d |  | 164h | 1,640,000 | 1,640,000 |  |
| 34 | 3.1.1.1 | B001 - Catálogo de bancos | 2h | 2026-08-07 17:00 | 2026-08-07 19:00 | 9 | 2026-08-07 17:00 | 2026-08-07 19:00 | 2h | 0d | Backend | 2h | 20,000 | 20,000 | B001 - Catálogo de bancos - Backend |
| 35 | 3.1.1.2 | B002 - Cuentas bancarias | 4h | 2026-08-10 09:00 | 2026-08-10 13:00 | 34 | 2026-08-10 09:00 | 2026-08-10 13:00 | 4h | 0d | Backend | 4h | 40,000 | 40,000 | B002 - Cuentas bancarias - Backend |
| 36 | 3.1.2.1 | B003 - Importación de cartolas CSV/XLSX | 10h | 2026-08-10 15:00 | 2026-08-11 17:00 | 35, 8 | 2026-08-10 15:00 | 2026-08-11 17:00 | 10h | 0d | Integraciones | 10h | 100,000 | 100,000 | B003 - Importación de cartolas CSV/XLSX - Integraciones |
| 37 | 3.1.2.2 | B004 - Plantillas de mapeo bancario | 8h | 2026-08-11 17:00 | 2026-08-12 17:00 | 36 | 2026-08-11 17:00 | 2026-08-12 17:00 | 8h | 0d | Integraciones | 8h | 80,000 | 80,000 | B004 - Plantillas de mapeo bancario - Integraciones |
| 38 | 3.1.1.3 | B005 - Detección de duplicados | 6h | 2026-08-12 17:00 | 2026-08-13 13:00 | 37 | 2026-08-12 17:00 | 2026-08-13 13:00 | 6h | 0d | Backend | 6h | 60,000 | 60,000 | B005 - Detección de duplicados - Backend |
| 39 | 3.1.3.1 | B006 - Lista de movimientos | 4h | 2026-08-13 15:00 | 2026-08-13 19:00 | 38 | 2026-08-13 15:00 | 2026-08-13 19:00 | 4h | 0d | Frontend | 4h | 40,000 | 40,000 | B006 - Lista de movimientos - Frontend |
| 40 | 3.1.3.2 | B007 - Detalle de movimiento | 4h | 2026-08-14 09:00 | 2026-08-14 13:00 | 39 | 2026-08-14 09:00 | 2026-08-14 13:00 | 4h | 0d | Frontend | 4h | 40,000 | 40,000 | B007 - Detalle de movimiento - Frontend |
| 41 | 3.1.1.4 | B008 - Clasificación manual | 4h | 2026-08-14 15:00 | 2026-08-14 19:00 | 40 | 2026-08-14 15:00 | 2026-08-14 19:00 | 4h | 0d | Backend | 4h | 40,000 | 40,000 | B008 - Clasificación manual - Backend |
| 42 | 3.1.1.5 | B009 - Aplicaciones bancarias múltiples | 10h | 2026-08-17 09:00 | 2026-08-18 11:00 | 41 | 2026-08-17 09:00 | 2026-08-18 11:00 | 10h | 0d | Backend | 10h | 100,000 | 100,000 | B009 - Aplicaciones bancarias múltiples - Backend |
| 43 | 3.1.2.3 | B010 - Un movimiento paga varias facturas | 12h | 2026-09-03 17:00 | 2026-09-07 11:00 | 69, 42, 61 | 2026-09-03 17:00 | 2026-09-07 11:00 | 12h | 0d | Integraciones | 12h | 120,000 | 120,000 | B010 - Un movimiento paga varias facturas - Integraciones |
| 44 | 3.1.1.6 | B011 - Conciliación parcial | 10h | 2026-09-07 11:00 | 2026-09-08 13:00 | 43 | 2026-09-07 11:00 | 2026-09-08 13:00 | 10h | 0d | Backend | 10h | 100,000 | 100,000 | B011 - Conciliación parcial - Backend |
| 45 | 3.2.1.1 | B012 - Reglas de cruce automático | 12h | 2026-10-06 17:00 | 2026-10-08 11:00 | 32, 47 | 2026-10-06 17:00 | 2026-10-08 11:00 | 12h | 0d | Backend | 12h | 120,000 | 120,000 | B012 - Reglas de cruce automático - Backend |
| 46 | 3.1.3.3 | B013 - Cruce manual asistido | 8h | 2026-09-08 15:00 | 2026-09-09 13:00 | 44 | 2026-09-08 15:00 | 2026-09-09 13:00 | 8h | 0d | Frontend | 8h | 80,000 | 80,000 | B013 - Cruce manual asistido - Frontend |
| 47 | 3.1.2.4 | B014 - Cruce con rendiciones y facturas | 12h | 2026-09-25 15:00 | 2026-09-28 19:00 | 26, 43, 44, 46, 64, 24 | 2026-09-25 15:00 | 2026-09-28 19:00 | 12h | 0d | Integraciones | 12h | 120,000 | 120,000 | B014 - Cruce con rendiciones y facturas - Integraciones |
| 48 | 3.1.1.7 | B015 - Exclusiones justificadas | 4h | 2026-10-08 11:00 | 2026-10-08 17:00 | 45 | 2026-10-08 11:00 | 2026-10-08 17:00 | 4h | 0d | Backend | 4h | 40,000 | 40,000 | B015 - Exclusiones justificadas - Backend |
| 49 | 3.2.1.2 | B016 - Reversas y reapertura | 8h | 2026-10-08 17:00 | 2026-10-09 17:00 | 48, 47, 7 | 2026-10-08 17:00 | 2026-10-09 17:00 | 8h | 0d | Backend | 8h | 80,000 | 80,000 | B016 - Reversas y reapertura - Backend |
| 50 | 3.2.1.3 | B017 - Cierre de período | 10h | 2026-10-09 17:00 | 2026-10-12 19:00 | 49 | 2026-10-09 17:00 | 2026-10-12 19:00 | 10h | 0d | Backend | 10h | 100,000 | 100,000 | B017 - Cierre de período - Backend |
| 51 | 3.2.2.1 | B018 - Dashboard de conciliación | 8h | 2026-10-13 09:00 | 2026-10-13 19:00 | 50 | 2026-10-13 09:00 | 2026-10-13 19:00 | 8h | 0d | Frontend | 8h | 80,000 | 80,000 | B018 - Dashboard de conciliación - Frontend |
| 52 | 3.2.1.4 | B019 - Alertas bancarias | 4h | 2026-10-14 09:00 | 2026-10-14 13:00 | 51 | 2026-10-14 09:00 | 2026-10-14 13:00 | 4h | 0d | Backend | 4h | 40,000 | 40,000 | B019 - Alertas bancarias - Backend |
| 53 | 3.2.2.2 | B020 - Reportes y exportación | 8h | 2026-10-14 15:00 | 2026-10-15 13:00 | 52 | 2026-10-14 15:00 | 2026-10-15 13:00 | 8h | 0d | Frontend | 8h | 80,000 | 80,000 | B020 - Reportes y exportación - Frontend |
| 54 | 3.1.4.1 | B021 - Pruebas de conciliación | 16h | 2026-10-15 15:00 | 2026-10-19 13:00 | 53, 47, 49 | 2026-10-15 15:00 | 2026-10-19 13:00 | 16h | 0d | QA / Tester | 16h | 160,000 | 160,000 | B021 - Pruebas de conciliación - QA / Tester |
| 55 | 1.4 | **Facturacion y Cobranza** | 12.62d | 2026-08-18 11:00 | 2026-09-03 17:00 |  | 2026-08-18 11:00 | 2026-09-03 17:00 | 12.62d | 0d |  | 100h | 1,000,000 | 1,000,000 |  |
| 56 | 4.1.1.1 | F001 - Clientes y contactos | 4h | 2026-08-18 11:00 | 2026-08-18 17:00 | 42 | 2026-08-18 11:00 | 2026-08-18 17:00 | 4h | 0d | Integraciones | 4h | 40,000 | 40,000 | F001 - Clientes y contactos - Integraciones |
| 57 | 4.1.2.1 | F002 - Registro o importación de facturas | 6h | 2026-08-18 17:00 | 2026-08-19 13:00 | 56, 6 | 2026-08-18 17:00 | 2026-08-19 13:00 | 6h | 0d | Backend | 6h | 60,000 | 60,000 | F002 - Registro o importación de facturas - Backend |
| 58 | 4.1.3.1 | F003 - Lista de facturas | 4h | 2026-08-19 15:00 | 2026-08-19 19:00 | 57 | 2026-08-19 15:00 | 2026-08-19 19:00 | 4h | 0d | Frontend | 4h | 40,000 | 40,000 | F003 - Lista de facturas - Frontend |
| 59 | 4.1.2.2 | F004 - Estado calculado de cobranza | 8h | 2026-08-20 09:00 | 2026-08-20 19:00 | 58 | 2026-08-20 09:00 | 2026-08-20 19:00 | 8h | 0d | Backend | 8h | 80,000 | 80,000 | F004 - Estado calculado de cobranza - Backend |
| 60 | 4.1.2.3 | F005 - Registro de pagos de clientes | 6h | 2026-08-21 09:00 | 2026-08-21 17:00 | 59 | 2026-08-21 09:00 | 2026-08-21 17:00 | 6h | 0d | Backend | 6h | 60,000 | 60,000 | F005 - Registro de pagos de clientes - Backend |
| 61 | 4.1.2.4 | F006 - Aplicación de pago a varias facturas | 10h | 2026-08-21 17:00 | 2026-08-24 19:00 | 60 | 2026-08-21 17:00 | 2026-08-24 19:00 | 10h | 0d | Backend | 10h | 100,000 | 100,000 | F006 - Aplicación de pago a varias facturas - Backend |
| 62 | 4.1.2.5 | F007 - Pagos parciales y múltiples | 10h | 2026-08-25 09:00 | 2026-08-26 11:00 | 61 | 2026-08-25 09:00 | 2026-08-26 11:00 | 10h | 0d | Backend | 10h | 100,000 | 100,000 | F007 - Pagos parciales y múltiples - Backend |
| 63 | 4.1.2.6 | F008 - Excedentes y pagos sin aplicar | 6h | 2026-08-26 11:00 | 2026-08-26 19:00 | 62 | 2026-08-26 11:00 | 2026-08-26 19:00 | 6h | 0d | Backend | 6h | 60,000 | 60,000 | F008 - Excedentes y pagos sin aplicar - Backend |
| 64 | 4.1.1.2 | F009 - Vinculación con cartola bancaria | 12h | 2026-08-27 09:00 | 2026-08-28 13:00 | 63, 36, 61 | 2026-08-27 09:00 | 2026-08-28 13:00 | 12h | 0d | Integraciones | 12h | 120,000 | 120,000 | F009 - Vinculación con cartola bancaria - Integraciones |
| 65 | 4.2.1.1 | F010 - Gestión de cobranza | 6h | 2026-08-28 15:00 | 2026-08-31 11:00 | 64 | 2026-08-28 15:00 | 2026-08-31 11:00 | 6h | 0d | Frontend | 6h | 60,000 | 60,000 | F010 - Gestión de cobranza - Frontend |
| 66 | 4.2.2.1 | F011 - Alertas de vencimiento | 4h | 2026-08-31 11:00 | 2026-08-31 17:00 | 65 | 2026-08-31 11:00 | 2026-08-31 17:00 | 4h | 0d | Backend | 4h | 40,000 | 40,000 | F011 - Alertas de vencimiento - Backend |
| 67 | 4.2.1.2 | F012 - Antigüedad de saldos | 6h | 2026-08-31 17:00 | 2026-09-01 13:00 | 66 | 2026-08-31 17:00 | 2026-09-01 13:00 | 6h | 0d | Frontend | 6h | 60,000 | 60,000 | F012 - Antigüedad de saldos - Frontend |
| 68 | 4.2.1.3 | F013 - Reportes y exportación | 6h | 2026-09-01 15:00 | 2026-09-02 11:00 | 67 | 2026-09-01 15:00 | 2026-09-02 11:00 | 6h | 0d | Frontend | 6h | 60,000 | 60,000 | F013 - Reportes y exportación - Frontend |
| 69 | 4.1.4.1 | F014 - Pruebas de facturación y pagos | 12h | 2026-09-02 11:00 | 2026-09-03 17:00 | 68 | 2026-09-02 11:00 | 2026-09-03 17:00 | 12h | 0d | QA / Tester | 12h | 120,000 | 120,000 | F014 - Pruebas de facturación y pagos - QA / Tester |

Notes:
- 34: Bancos activos y datos consistentes.
- 35: Cuenta, moneda, banco, titular y estado.
- 36: Archivo importado con validación y resumen de errores.
- 37: Columnas configurables por banco y formato.
- 38: Hash de archivo y fingerprint por movimiento.
- 39: Filtros por cuenta, fecha, monto, texto y estado.
- 40: Datos originales, aplicaciones y trazabilidad.
- 41: Tipo, contraparte y observación justificable.
- 42: Un movimiento se distribuye entre varios destinos financieros.
- 43: Distribución por monto sin exceder saldos ni movimiento.
- 44: Saldo aplicado, pendiente y estado calculado.
- 45: Coincidencia por monto, referencia, RUT y fecha.
- 46: Búsqueda y selección de operaciones candidatas.
- 47: Enlace con pagos, devoluciones, reembolsos y factoring.
- 48: Excluir sin perder auditoría ni alterar la cartola.
- 49: Deshacer conciliación con motivo y permisos.
- 50: Bloqueo por cuenta y período con diferencias controladas.
- 51: Pendientes, parciales, diferencias y antigüedad.
- 52: Duplicados, movimientos sin identificar y cierres pendientes.
- 53: Conciliados, pendientes, diferencias y aplicaciones.
- 54: Casos parciales, múltiples, duplicados y reversas.
- 56: Reutiliza maestros existentes y conserva contacto histórico.
- 57: Número, fechas, OC, montos e impuestos validados.
- 58: Filtros por cliente, estado, vencimiento y factoring.
- 59: Pendiente, parcial, pagada, vencida, cedida o anulada.
- 60: Receptor, medio, fecha, monto y referencia.
- 61: Un pago se distribuye sin exceder el monto disponible.
- 62: Una factura admite varios pagos y saldo pendiente.
- 63: Saldo no aplicado visible y regularizable.
- 64: Pago conciliable con uno o más movimientos.
- 65: Llamadas, correos, respuestas y próximo seguimiento.
- 66: Avisos por antigüedad, promesas y falta de respuesta.
- 67: Tramos de vencimiento y cartera por cliente.
- 68: Pagadas, pendientes, parciales y vencidas.
- 69: Pagos múltiples, parciales, excedentes y anulaciones.

| ID | WBS | Task | Duration | Start | Finish | Predecessors | Baseline start | Baseline finish | Baseline duration | Total slack | Resources | Work | Cost | Baseline cost |
| --- | --- | --- | --- | --- | --- | --- | --- | --- | --- | --- | --- | --- | --- | --- |
| 70 | 1.5 | **Factoring** | 11.62d | 2026-10-19 15:00 | 2026-11-04 11:00 |  | 2026-10-19 15:00 | 2026-11-04 11:00 | 11.62d | 0d |  | 94h | 940,000 | 940,000 |
| 71 | 5.1.1.1 | X001 - Empresas de factoring | 4h | 2026-10-19 15:00 | 2026-10-19 19:00 | 54 | 2026-10-19 15:00 | 2026-10-19 19:00 | 4h | 0d | Backend | 4h | 40,000 | 40,000 |
| 72 | 5.1.1.2 | X002 - Operación de factoring | 6h | 2026-10-20 09:00 | 2026-10-20 17:00 | 71, 57 | 2026-10-20 09:00 | 2026-10-20 17:00 | 6h | 0d | Backend | 6h | 60,000 | 60,000 |
| 73 | 5.1.1.3 | X003 - Estados y eventos de factoring | 4h | 2026-10-20 17:00 | 2026-10-21 11:00 | 72, 5 | 2026-10-20 17:00 | 2026-10-21 11:00 | 4h | 0d | Backend | 4h | 40,000 | 40,000 |
| 74 | 5.1.1.4 | X004 - Flujos de anticipo y comisión | 8h | 2026-10-21 11:00 | 2026-10-22 11:00 | 73 | 2026-10-21 11:00 | 2026-10-22 11:00 | 8h | 0d | Backend | 8h | 80,000 | 80,000 |
| 75 | 5.1.1.5 | X005 - Confirmación de pago al factor | 6h | 2026-10-22 11:00 | 2026-10-22 19:00 | 74 | 2026-10-22 11:00 | 2026-10-22 19:00 | 6h | 0d | Backend | 6h | 60,000 | 60,000 |
| 76 | 5.1.1.6 | X006 - Alertas de mora en factoring | 4h | 2026-10-23 09:00 | 2026-10-23 13:00 | 75 | 2026-10-23 09:00 | 2026-10-23 13:00 | 4h | 0d | Backend | 4h | 40,000 | 40,000 |
| 77 | 5.1.1.7 | X007 - Notificación y cobro con recurso | 6h | 2026-10-23 15:00 | 2026-10-26 11:00 | 76 | 2026-10-23 15:00 | 2026-10-26 11:00 | 6h | 0d | Backend | 6h | 60,000 | 60,000 |
| 78 | 5.1.2.1 | X008 - Detectar pago directo de factura cedida | 12h | 2026-10-27 15:00 | 2026-10-28 19:00 | 81, 64, 42 | 2026-10-27 15:00 | 2026-10-28 19:00 | 12h | 0d | Integraciones | 12h | 120,000 | 120,000 |
| 79 | 5.1.1.8 | X009 - Proceso de devolución al cliente | 6h | 2026-10-29 09:00 | 2026-10-29 17:00 | 78 | 2026-10-29 09:00 | 2026-10-29 17:00 | 6h | 0d | Backend | 6h | 60,000 | 60,000 |
| 80 | 5.1.2.2 | X010 - Conciliar devolución bancaria | 10h | 2026-10-29 17:00 | 2026-10-30 19:00 | 79, 47 | 2026-10-29 17:00 | 2026-10-30 19:00 | 10h | 0d | Integraciones | 10h | 100,000 | 100,000 |
| 81 | 5.1.2.3 | X011 - Conciliar liquidación del factor | 10h | 2026-10-26 11:00 | 2026-10-27 13:00 | 77, 47 | 2026-10-26 11:00 | 2026-10-27 13:00 | 10h | 0d | Integraciones | 10h | 100,000 | 100,000 |
| 82 | 5.2.1.1 | X012 - Reportes de factoring | 6h | 2026-11-02 09:00 | 2026-11-02 17:00 | 80, 81 | 2026-11-02 09:00 | 2026-11-02 17:00 | 6h | 0d | Frontend | 6h | 60,000 | 60,000 |
| 83 | 5.1.3.1 | X013 - Pruebas de factoring | 12h | 2026-11-02 17:00 | 2026-11-04 11:00 | 82, 80, 81, 77 | 2026-11-02 17:00 | 2026-11-04 11:00 | 12h | 0d | QA / Tester | 12h | 120,000 | 120,000 |
| 84 | 1.6 | **Calidad y despliegue** | 5d | 2026-11-04 11:00 | 2026-11-11 11:00 |  | 2026-11-04 11:00 | 2026-11-11 11:00 | 5d | 0d |  | 40h | 400,000 | 400,000 |
| 85 | 6.1.1.1 | Q001 - Pruebas end-to-end | 20h | 2026-11-04 11:00 | 2026-11-06 17:00 | 83, 31, 54, 69 | 2026-11-04 11:00 | 2026-11-06 17:00 | 20h | 0d | QA / Tester | 20h | 200,000 | 200,000 |
| 86 | 6.1.1.2 | Q002 - Aceptación de usuario y ajustes | 20h | 2026-11-06 17:00 | 2026-11-11 11:00 | 85 | 2026-11-06 17:00 | 2026-11-11 11:00 | 20h | 0d | QA / Tester | 20h | 200,000 | 200,000 |

Notes:
- 71: Catálogo, contactos y condiciones. / Text1: X001 - Empresas de factoring - Backend
- 72: Cesión, vencimiento, recurso y montos contratados. / Text1: X002 - Operación de factoring - Backend
- 73: Historial de cesión, mora, pago y liquidación. / Text1: X003 - Estados y eventos de factoring - Backend
- 74: Anticipo, comisión, retención y liquidación separados. / Text1: X004 - Flujos de anticipo y comisión - Backend
- 75: Pago del cliente al factor sin ingreso bancario en Extintores Real. / Text1: X005 - Confirmación de pago al factor - Backend
- 76: Vencimiento sin pago y seguimiento al cliente. / Text1: X006 - Alertas de mora en factoring - Backend
- 77: Registro de deuda reclamada a Extintores Real. / Text1: X007 - Notificación y cobro con recurso - Backend
- 78: Ingreso en banco de ER genera alerta crítica y no salda el factoring. / Text1: X008 - Detectar pago directo de factura cedida - Integraciones
- 79: Solicitud, aprobación, egreso y cierre. / Text1: X009 - Proceso de devolución al cliente - Backend
- 80: Egreso enlazado al pago erróneo y a su devolución. / Text1: X010 - Conciliar devolución bancaria - Integraciones
- 81: Anticipos y liquidaciones enlazados con la cartola. / Text1: X011 - Conciliar liquidación del factor - Integraciones
- 82: Cedidas, en mora, recaudadas, por liquidar y con recurso. / Text1: X012 - Reportes de factoring - Frontend
- 83: Mora, pago directo, devolución, recurso y liquidación. / Text1: X013 - Pruebas de factoring - QA / Tester
- 85: Flujos completos entre rendición, banco, factura y factoring. / Text1: Q001 - Pruebas end-to-end - QA / Tester
- 86: Casos reales ejecutados y observaciones resueltas. / Text1: Q002 - Aceptación de usuario y ajustes - QA / Tester
